# Lịch sách dành cho trẻ em

How a schedule from MS Project changed from version to version. A marks actual dates.

## Version 1 (saved 2022-10-24, file Advanced Tracking A_Start.mpp)

Note of the change: init

| ID | WBS | Task | Duration | Start | Finish | Predecessors | Total float | Constraint |
| --- | --- | --- | --- | --- | --- | --- | --- | --- |
| 1 | 1 | **Họp nhân viên biên tập** | 60.12d | 2015-04-13 08:00 | 2015-07-06 09:00 |  | 103.75d |  |
| 2 |  | Họp nhân viên biên tập lần 1 | 1h | 2015-04-13 08:00 | 2015-04-13 09:00 |  | 163.75d | start no earlier than 2015-04-13 08:00 |
| 3 |  | Họp nhân viên biên tập lần 2 | 1h | 2015-04-20 08:00 | 2015-04-20 09:00 |  | 158.75d | start no earlier than 2015-04-20 08:00 |
| 4 |  | Họp nhân viên biên tập lần 3 | 1h | 2015-04-27 08:00 | 2015-04-27 09:00 |  | 153.75d | start no earlier than 2015-04-27 08:00 |
| 5 |  | Họp nhân viên biên tập lần 4 | 1h | 2015-05-04 08:00 | 2015-05-04 09:00 |  | 148.75d | start no earlier than 2015-05-04 08:00 |
| 6 |  | Họp nhân viên biên tập lần 5 | 1h | 2015-05-11 08:00 | 2015-05-11 09:00 |  | 143.75d | start no earlier than 2015-05-11 08:00 |
| 7 |  | Họp nhân viên biên tập lần 6 | 1h | 2015-05-18 08:00 | 2015-05-18 09:00 |  | 138.75d | start no earlier than 2015-05-18 08:00 |
| 8 |  | Họp nhân viên biên tập lần 7 | 1h | 2015-05-25 08:00 | 2015-05-25 09:00 |  | 133.75d | start no earlier than 2015-05-25 08:00 |
| 9 |  | Họp nhân viên biên tập lần 8 | 1h | 2015-06-01 08:00 | 2015-06-01 09:00 |  | 128.75d | start no earlier than 2015-06-01 08:00 |
| 10 |  | Họp nhân viên biên tập lần 9 | 1h | 2015-06-08 08:00 | 2015-06-08 09:00 |  | 123.75d | start no earlier than 2015-06-08 08:00 |
| 11 |  | Họp nhân viên biên tập lần 10 | 1h | 2015-06-15 08:00 | 2015-06-15 09:00 |  | 118.75d | start no earlier than 2015-06-15 08:00 |
| 12 |  | Họp nhân viên biên tập lần 11 | 1h | 2015-06-22 08:00 | 2015-06-22 09:00 |  | 113.75d | start no earlier than 2015-06-22 08:00 |
| 13 |  | Họp nhân viên biên tập lần 12 | 1h | 2015-06-29 08:00 | 2015-06-29 09:00 |  | 108.75d | start no earlier than 2015-06-29 08:00 |
| 14 |  | Họp nhân viên biên tập lần 13 | 1h | 2015-07-06 08:00 | 2015-07-06 09:00 |  | 103.75d | start no earlier than 2015-07-06 08:00 |
| 15 | 2 | **Sự tiêp nhận** | 35.5d | 2015-04-06 08:00 | 2015-05-25 12:00 |  | 0d |  |
| 16 |  | Nhận bản thảo | 0d | 2015-04-06 08:00 | 2015-04-06 08:00 |  | 0d |  |
| 17 |  | Biên tập nội dung | 15d | 2015-04-06 08:00 | 2015-04-30 10:00 | 16 | 0d |  |
| 18 |  | Đánh giá tác phẩm gốc | 10.25d | 2015-04-23 10:00 | 2015-05-07 12:00 | 17FS-5d | 0d |  |
| 19 |  | Đánh giá của tác giả về nội dung biên tập | 12d | 2015-05-07 13:00 | 2015-05-25 12:00 | 17, 18 | 0d |  |
| 20 |  | Bàn giao cho bộ phận biên tập | 0d | 2015-05-25 12:00 | 2015-05-25 12:00 | 19 | 0d |  |
| 21 | 3 | **Biên tập** | 29.12d | 2015-05-25 13:00 | 2015-07-03 14:00 | 15 | 0d |  |
| 22 |  | Sắp xếp bản thảo cho bản sao | 5.12d | 2015-05-25 13:00 | 2015-06-01 14:00 |  | 0d |  |
| 23 |  | Bản sao | 11.25d | 2015-06-01 14:00 | 2015-06-16 16:00 | 22 | 0d |  |
| 24 |  | Đánh giá của tác giả về bản sao | 10d | 2015-06-16 16:00 | 2015-06-30 16:00 | 23 | 0d |  |
| 25 |  | Kết hợp bảo sao | 5.12d | 2015-06-26 11:00 | 2015-07-03 14:00 | 24FS-2.5% | 0d |  |
| 26 |  | Bàn giao cho bộ phận sản xuất | 0d | 2015-07-03 14:00 | 2015-07-03 14:00 | 25 | 0d |  |
| 27 | 4 | **Thiết kế và Sản xuất** | 58.25d | 2015-07-03 14:00 | 2015-09-23 16:00 | 21 | 0d |  |
| 28 |  | Thiết lập trang | 15d | 2015-07-03 14:00 | 2015-07-24 14:00 |  | 0d |  |
| 29 |  | Thiết kế minh họa bên trong | 15.25d | 2015-07-03 14:00 | 2015-07-24 16:00 | 28SS | 0d |  |
| 30 | 4.3 | **Đánh giá các trang lần thứ nhất** | 30d | 2015-07-24 16:00 | 2015-09-04 16:00 | 29 | 0d |  |
| 31 |  | Hiệu đính và lập chỉ mục | 10d | 2015-07-24 16:00 | 2015-08-07 16:00 |  | 0d | start no earlier than 2015-07-17 08:00 |
| 32 |  | Kết hợp đánh giá các trang lần thứ nhất | 10d | 2015-08-07 16:00 | 2015-08-21 16:00 | 31 | 0d |  |
| 33 |  | Gửi các trang đã được hiệu đính đến bộ phận sản xuất | 0d | 2015-08-21 16:00 | 2015-08-21 16:00 | 32 | 0d |  |
| 34 |  | Nhập các chỉnh sửa trang và lập chỉ mục | 5d | 2015-08-21 16:00 | 2015-08-28 16:00 | 33 | 0d |  |
| 35 |  | Thiết kế trang bìa | 5d | 2015-08-28 16:00 | 2015-09-04 16:00 | 34 | 0d |  |
| 36 | 4.4 | **Đánh giá các trang lần thứ hai** | 13d | 2015-09-04 16:00 | 2015-09-23 16:00 |  | 0d |  |
| 37 |  | In thử và đánh giá | 6.5d | 2015-09-04 16:00 | 2015-09-15 11:00 | 35 | 0d |  |
| 38 |  | Gửi các trang đã được hiệu đính đến bộ phận sản xuất | 0d | 2015-09-15 11:00 | 2015-09-15 11:00 | 37 | 0d |  |
| 39 |  | Đánh giá cuối cùng | 5d | 2015-09-16 16:00 | 2015-09-23 16:00 | 38 | 0d |  |
| 40 | 4.5 | **Thiết kế trang web đồng hành của sách** | 10d | 2015-09-04 16:00 | 2015-09-18 16:00 | 30 | 3d |  |
| 41 |  | Tạo mô hình | 4.5d | 2015-09-04 16:00 | 2015-09-16 16:00 |  | 3d |  |
| 42 |  | Đánh giá với tác giả | 2d | 2015-09-16 16:00 | 2015-09-18 16:00 | 41 | 3d |  |
| 43 | 5 | **Chuẩn bị màu và in** | 46d | 2015-09-23 16:00 | 2015-11-26 16:00 | 40 | 0d |  |
| 44 |  | Gửi đến bộ phận pha màu | 1d | 2015-09-23 16:00 | 2015-09-28 16:00 | 36 | 0d |  |
| 45 |  | Tạo các bản in | 10d | 2015-09-28 16:00 | 2015-10-12 16:00 | 44 | 0d |  |
| 46 |  | In và vận chuyển | 30d | 2015-10-15 16:00 | 2015-11-26 16:00 | 45FS+3d | 0d |  |
| 47 | 6 | **Chuẩn bị ra mắt sách** | 22d | 2015-09-28 16:00 | 2015-10-28 16:00 |  | 21d |  |
| 48 |  | Lập kế hoạch ra mắt | 5d | 2015-09-28 16:00 | 2015-10-05 16:00 | 44 | 21d |  |
| 49 |  | Chỉ định các thành viên trong nhóm khởi động | 1d | 2015-10-05 16:00 | 2015-10-06 16:00 | 48 | 21d |  |
| 50 |  | Hoàn thành bảng câu hỏi về tác giả | 5d | 2015-10-06 16:00 | 2015-10-13 16:00 | 49 | 21d |  |
| 51 |  | Lên lịch phỏng vấn tác giả | 1d | 2015-10-13 16:00 | 2015-10-14 16:00 | 50 | 21d |  |
| 52 |  | Thiết kế và đặt hàng tài liệu tiếp thị | 10d | 2015-10-14 16:00 | 2015-10-28 16:00 | 51 | 21d |  |

## Version 2 (saved 2022-10-24, file Advanced Tracking B_Start.mpp)

Note of the change: init

Last finish stays 2015-11-26. Complete tasks 0 → 4.

Changed:

| ID | Task | Start | Finish | Complete | Total float |
| --- | --- | --- | --- | --- | --- |
| 1 | **Họp nhân viên biên tập** | 2015-04-13 08:00 A |  | 0% → 15% |  |
| 2 | Họp nhân viên biên tập lần 1 | 2015-04-13 08:00 A | 2015-04-13 09:00 A | 0% → 100% | 163.75d → none |
| 3 | Họp nhân viên biên tập lần 2 | 2015-04-20 08:00 A | 2015-04-20 09:00 A | 0% → 100% | 158.75d → none |
| 15 | **Sự tiêp nhận** | 2015-04-06 08:00 A |  | 0% → 58% |  |
| 16 | Nhận bản thảo | 2015-04-06 08:00 A | 2015-04-06 08:00 A | 0% → 100% | 0d → none |
| 17 | Biên tập nội dung | 2015-04-06 08:00 A | 2015-04-30 10:00 A | 0% → 100% | 0d → none |
| 18 | Đánh giá tác phẩm gốc | 2015-04-23 10:00 A |  | 0% → 66% |  |

## Version 3 (saved 2022-10-24, file Advanced Tracking C_Start.mpp)

Note of the change: init

Last finish stays 2015-11-26. Complete tasks 4 → 14.

Changed:

| ID | Task | Start | Finish | Duration | Complete | Total float |
| --- | --- | --- | --- | --- | --- | --- |
| 1 | **Họp nhân viên biên tập** |  |  |  | 15% → 54% | 103.75d → 103.88d |
| 4 | Họp nhân viên biên tập lần 3 | 2015-04-27 08:00 A | 2015-04-27 09:00 A |  | 0% → 100% | 153.75d → none |
| 5 | Họp nhân viên biên tập lần 4 | 2015-05-04 08:00 A | 2015-05-04 09:00 A |  | 0% → 100% | 148.75d → none |
| 6 | Họp nhân viên biên tập lần 5 | 2015-05-11 08:00 A | 2015-05-11 09:00 A |  | 0% → 100% | 143.75d → none |
| 7 | Họp nhân viên biên tập lần 6 | 2015-05-18 08:00 A | 2015-05-18 09:00 A |  | 0% → 100% | 138.75d → none |
| 8 | Họp nhân viên biên tập lần 7 | 2015-05-25 08:00 A | 2015-05-25 09:00 A |  | 0% → 100% | 133.75d → none |
| 15 | **Sự tiêp nhận** |  | 2015-05-25 12:00 → 2015-05-26 17:00 A (+1d) | 35.5d → 37d | 58% → 100% | 0d → none |
| 18 | Đánh giá tác phẩm gốc |  | 2015-05-07 12:00 A |  | 66% → 100% | 0d → none |
| 19 | Đánh giá của tác giả về nội dung biên tập | 2015-05-07 13:00 A | 2015-05-25 12:00 → 2015-05-26 17:00 A (+1d) | 12d → 13.5d | 0% → 100% | 0d → none |
| 20 | Bàn giao cho bộ phận biên tập | 2015-05-25 12:00 → 2015-05-26 17:00 A (+1d) | 2015-05-25 12:00 → 2015-05-26 17:00 A (+1d) |  | 0% → 100% | 0d → none |
| 21 | **Biên tập** | 2015-05-25 13:00 → 2015-05-27 08:00 A (+2d) | 2015-07-03 14:00 → 2015-07-03 17:00 | 29.12d → 28d | 0% → 50% | 0d → 1.75d |
| 22 | Sắp xếp bản thảo cho bản sao | 2015-05-25 13:00 → 2015-05-27 08:00 A (+2d) | 2015-06-01 14:00 → 2015-06-02 17:00 A (+1d) | 5.12d → 5d | 0% → 100% | 0d → none |
| 23 | Bản sao | 2015-06-01 14:00 → 2015-06-03 08:00 A (+2d) | 2015-06-16 16:00 → 2015-06-17 10:00 A (+1d) | 11.25d → 10.25d | 0% → 100% | 0d → none |
| 24 | Đánh giá của tác giả về bản sao | 2015-06-16 16:00 → 2015-06-17 10:00 (+1d) | 2015-06-30 16:00 → 2015-07-01 10:00 (+1d) |  |  | 0d → 1.75d |
| 25 | Kết hợp bảo sao | 2015-06-26 11:00 → 2015-06-26 15:00 | 2015-07-03 14:00 → 2015-07-03 17:00 |  |  | 0d → 1.75d |
| 26 | Bàn giao cho bộ phận sản xuất | 2015-07-03 14:00 → 2015-07-03 17:00 | 2015-07-03 14:00 → 2015-07-03 17:00 |  |  | 0d → 1.75d |
| 27 | **Thiết kế và Sản xuất** | 2015-07-03 14:00 → 2015-07-06 08:00 (+3d) | 2015-09-23 16:00 → 2015-09-23 17:00 | 58.25d → 58d |  | 0d → 1.75d |
| 28 | Thiết lập trang | 2015-07-03 14:00 → 2015-07-06 08:00 (+3d) | 2015-07-24 14:00 → 2015-07-24 17:00 |  |  | 0d → 1.75d |
| 29 | Thiết kế minh họa bên trong | 2015-07-03 14:00 → 2015-07-06 08:00 (+3d) | 2015-07-24 16:00 → 2015-07-27 10:00 (+3d) |  |  | 0d → 1.75d |
| 30 | **Đánh giá các trang lần thứ nhất** | 2015-07-24 16:00 → 2015-07-27 10:00 (+3d) | 2015-09-04 16:00 → 2015-09-07 10:00 (+3d) |  |  | 0d → 1.75d |
| 31 | Hiệu đính và lập chỉ mục | 2015-07-24 16:00 → 2015-07-27 10:00 (+3d) | 2015-08-07 16:00 → 2015-08-10 10:00 (+3d) |  |  | 0d → 1.75d |
| 32 | Kết hợp đánh giá các trang lần thứ nhất | 2015-08-07 16:00 → 2015-08-10 10:00 (+3d) | 2015-08-21 16:00 → 2015-08-24 10:00 (+3d) |  |  | 0d → 1.75d |
| 33 | Gửi các trang đã được hiệu đính đến bộ phận sản xuất | 2015-08-21 16:00 → 2015-08-24 10:00 (+3d) | 2015-08-21 16:00 → 2015-08-24 10:00 (+3d) |  |  | 0d → 1.75d |
| 34 | Nhập các chỉnh sửa trang và lập chỉ mục | 2015-08-21 16:00 → 2015-08-24 10:00 (+3d) | 2015-08-28 16:00 → 2015-08-31 10:00 (+3d) |  |  | 0d → 1.75d |
| 35 | Thiết kế trang bìa | 2015-08-28 16:00 → 2015-08-31 10:00 (+3d) | 2015-09-04 16:00 → 2015-09-07 10:00 (+3d) |  |  | 0d → 1.75d |
| 36 | **Đánh giá các trang lần thứ hai** | 2015-09-04 16:00 → 2015-09-07 10:00 (+3d) | 2015-09-23 16:00 → 2015-09-23 17:00 | 13d → 12.75d |  | 0d → 1.75d |
| 37 | In thử và đánh giá | 2015-09-04 16:00 → 2015-09-07 10:00 (+3d) | 2015-09-15 11:00 → 2015-09-15 15:00 |  |  | 0d → 1.75d |
| 38 | Gửi các trang đã được hiệu đính đến bộ phận sản xuất | 2015-09-15 11:00 → 2015-09-15 15:00 | 2015-09-15 11:00 → 2015-09-15 15:00 |  |  | 0d → 1.75d |
| 39 | Đánh giá cuối cùng | 2015-09-16 16:00 → 2015-09-17 08:00 (+1d) | 2015-09-23 16:00 → 2015-09-23 17:00 |  |  | 0d → 2d |
| 40 | **Thiết kế trang web đồng hành của sách** | 2015-09-04 16:00 → 2015-09-07 10:00 (+3d) | 2015-09-18 16:00 → 2015-09-21 10:00 (+3d) |  |  | 3d → 4.75d |
| 41 | Tạo mô hình | 2015-09-04 16:00 → 2015-09-07 10:00 (+3d) | 2015-09-16 16:00 → 2015-09-17 10:00 (+1d) |  |  | 3d → 4.75d |
| 42 | Đánh giá với tác giả | 2015-09-16 16:00 → 2015-09-17 10:00 (+1d) | 2015-09-18 16:00 → 2015-09-21 10:00 (+3d) |  |  | 3d → 4.75d |
| 43 | **Chuẩn bị màu và in** | 2015-09-23 16:00 → 2015-09-28 08:00 (+5d) | 2015-11-26 16:00 → 2015-11-26 17:00 | 46d → 44d |  |  |
| 44 | Gửi đến bộ phận pha màu | 2015-09-23 16:00 → 2015-09-28 08:00 (+5d) | 2015-09-28 16:00 → 2015-09-28 17:00 |  |  |  |
| 45 | Tạo các bản in | 2015-09-28 16:00 → 2015-09-29 08:00 (+1d) | 2015-10-12 16:00 → 2015-10-12 17:00 |  |  |  |
| 46 | In và vận chuyển | 2015-10-15 16:00 → 2015-10-16 08:00 (+1d) | 2015-11-26 16:00 → 2015-11-26 17:00 |  |  |  |
| 47 | **Chuẩn bị ra mắt sách** | 2015-09-28 16:00 → 2015-09-29 08:00 (+1d) | 2015-10-28 16:00 → 2015-10-28 17:00 |  |  |  |
| 48 | Lập kế hoạch ra mắt | 2015-09-28 16:00 → 2015-09-29 08:00 (+1d) | 2015-10-05 16:00 → 2015-10-05 17:00 |  |  |  |
| 49 | Chỉ định các thành viên trong nhóm khởi động | 2015-10-05 16:00 → 2015-10-06 08:00 (+1d) | 2015-10-06 16:00 → 2015-10-06 17:00 |  |  |  |
| 50 | Hoàn thành bảng câu hỏi về tác giả | 2015-10-06 16:00 → 2015-10-07 08:00 (+1d) | 2015-10-13 16:00 → 2015-10-13 17:00 |  |  |  |
| 51 | Lên lịch phỏng vấn tác giả | 2015-10-13 16:00 → 2015-10-14 08:00 (+1d) | 2015-10-14 16:00 → 2015-10-14 17:00 |  |  |  |
| 52 | Thiết kế và đặt hàng tài liệu tiếp thị | 2015-10-14 16:00 → 2015-10-15 08:00 (+1d) | 2015-10-28 16:00 → 2015-10-28 17:00 |  |  |  |

## Version 4 (saved 2022-10-24, file Advanced Tracking D_Start.mpp)

Note of the change: init

Last finish 2015-11-26 → 2015-12-03 (+7d). Complete tasks 14 → 19.

Changed:

| ID | Task | Start | Finish | Duration | Complete | Total float | Other |
| --- | --- | --- | --- | --- | --- | --- | --- |
| 1 | **Họp nhân viên biên tập** | 2015-04-13 08:00 A → 2015-04-13 A | 2015-07-06 09:00 → 2015-08-05 (+30d) | 60.12d → 82.12d | 54% → 37% | 103.88d → 86.88d | baseline start 2015-04-13 08:00 → 2015-04-13; baseline finish 2015-07-06 09:00 → 2015-07-06 |
| 2 | Họp nhân viên biên tập lần 1 | 2015-04-13 08:00 A → 2015-04-13 A | 2015-04-13 09:00 A → 2015-04-13 A |  |  |  | constraint start no earlier than 2015-04-13 08:00 → start no earlier than 2015-04-13; baseline start 2015-04-13 08:00 → 2015-04-13; baseline finish 2015-04-13 09:00 → 2015-04-13 |
| 3 | Họp nhân viên biên tập lần 2 | 2015-04-20 08:00 A → 2015-04-20 A | 2015-04-20 09:00 A → 2015-04-20 A |  |  |  | constraint start no earlier than 2015-04-20 08:00 → start no earlier than 2015-04-20; baseline start 2015-04-20 08:00 → 2015-04-20; baseline finish 2015-04-20 09:00 → 2015-04-20 |
| 4 | Họp nhân viên biên tập lần 3 | 2015-04-27 08:00 A → 2015-04-27 A | 2015-04-27 09:00 A → 2015-04-27 A |  |  |  | constraint start no earlier than 2015-04-27 08:00 → start no earlier than 2015-04-27; baseline start 2015-04-27 08:00 → 2015-04-27; baseline finish 2015-04-27 09:00 → 2015-04-27 |
| 5 | Họp nhân viên biên tập lần 4 | 2015-05-04 08:00 A → 2015-05-04 A | 2015-05-04 09:00 A → 2015-05-04 A |  |  |  | constraint start no earlier than 2015-05-04 08:00 → start no earlier than 2015-05-04; baseline start 2015-05-04 08:00 → 2015-05-04; baseline finish 2015-05-04 09:00 → 2015-05-04 |
| 6 | Họp nhân viên biên tập lần 5 | 2015-05-11 08:00 A → 2015-05-11 A | 2015-05-11 09:00 A → 2015-05-11 A |  |  |  | constraint start no earlier than 2015-05-11 08:00 → start no earlier than 2015-05-11; baseline start 2015-05-11 08:00 → 2015-05-11; baseline finish 2015-05-11 09:00 → 2015-05-11 |
| 7 | Họp nhân viên biên tập lần 6 | 2015-05-18 08:00 A → 2015-05-18 A | 2015-05-18 09:00 A → 2015-05-18 A |  |  |  | constraint start no earlier than 2015-05-18 08:00 → start no earlier than 2015-05-18; baseline start 2015-05-18 08:00 → 2015-05-18; baseline finish 2015-05-18 09:00 → 2015-05-18 |
| 8 | Họp nhân viên biên tập lần 7 | 2015-05-25 08:00 A → 2015-05-25 A | 2015-05-25 09:00 A → 2015-05-25 A |  |  |  | constraint start no earlier than 2015-05-25 08:00 → start no earlier than 2015-05-25; baseline start 2015-05-25 08:00 → 2015-05-25; baseline finish 2015-05-25 09:00 → 2015-05-25 |
| 9 | Họp nhân viên biên tập lần 8 | 2015-06-01 08:00 → 2015-08-04 (+64d) | 2015-06-01 09:00 → 2015-08-05 (+65d) | 1h → 2h |  | 128.88d → 81.88d | constraint start no earlier than 2015-06-01 08:00 → start no earlier than 2015-08-04; baseline start 2015-06-01 08:00 → 2015-06-01; baseline finish 2015-06-01 09:00 → 2015-06-01 |
| 10 | Họp nhân viên biên tập lần 9 | 2015-06-08 08:00 → 2015-08-04 (+57d) | 2015-06-08 09:00 → 2015-08-05 (+58d) | 1h → 2h |  | 123.88d → 81.88d | constraint start no earlier than 2015-06-08 08:00 → start no earlier than 2015-08-04; baseline start 2015-06-08 08:00 → 2015-06-08; baseline finish 2015-06-08 09:00 → 2015-06-08 |
| 11 | Họp nhân viên biên tập lần 10 | 2015-06-15 08:00 → 2015-08-04 (+50d) | 2015-06-15 09:00 → 2015-08-05 (+51d) | 1h → 2h |  | 118.88d → 81.88d | constraint start no earlier than 2015-06-15 08:00 → start no earlier than 2015-08-04; baseline start 2015-06-15 08:00 → 2015-06-15; baseline finish 2015-06-15 09:00 → 2015-06-15 |
| 12 | Họp nhân viên biên tập lần 11 | 2015-06-22 08:00 → 2015-08-04 (+43d) | 2015-06-22 09:00 → 2015-08-05 (+44d) | 1h → 2h |  | 113.88d → 81.88d | constraint start no earlier than 2015-06-22 08:00 → start no earlier than 2015-08-04; baseline start 2015-06-22 08:00 → 2015-06-22; baseline finish 2015-06-22 09:00 → 2015-06-22 |
| 13 | Họp nhân viên biên tập lần 12 | 2015-06-29 08:00 → 2015-08-04 (+36d) | 2015-06-29 09:00 → 2015-08-05 (+37d) | 1h → 2h |  | 108.88d → 81.88d | constraint start no earlier than 2015-06-29 08:00 → start no earlier than 2015-08-04; baseline start 2015-06-29 08:00 → 2015-06-29; baseline finish 2015-06-29 09:00 → 2015-06-29 |
| 14 | Họp nhân viên biên tập lần 13 | 2015-07-06 08:00 → 2015-08-04 (+29d) | 2015-07-06 09:00 → 2015-08-05 (+30d) | 1h → 2h |  | 103.88d → 81.88d | constraint start no earlier than 2015-07-06 08:00 → start no earlier than 2015-08-04; baseline start 2015-07-06 08:00 → 2015-07-06; baseline finish 2015-07-06 09:00 → 2015-07-06 |
| 15 | **Sự tiêp nhận** | 2015-04-06 08:00 A → 2015-04-06 A | 2015-05-26 17:00 A → 2015-05-26 A |  |  |  | baseline start 2015-04-06 08:00 → 2015-04-06; baseline finish 2015-05-25 12:00 → 2015-05-25 |
| 16 | Nhận bản thảo | 2015-04-06 08:00 A → 2015-04-06 A | 2015-04-06 08:00 A → 2015-04-06 A |  |  |  | baseline start 2015-04-06 08:00 → 2015-04-06; baseline finish 2015-04-06 08:00 → 2015-04-06 |
| 17 | Biên tập nội dung | 2015-04-06 08:00 A → 2015-04-06 A | 2015-04-30 10:00 A → 2015-04-30 A |  |  |  | baseline start 2015-04-06 08:00 → 2015-04-06; baseline finish 2015-04-30 10:00 → 2015-04-30 |
| 18 | Đánh giá tác phẩm gốc | 2015-04-23 10:00 A → 2015-04-23 A | 2015-05-07 12:00 A → 2015-05-07 A |  |  |  | baseline start 2015-04-23 10:00 → 2015-04-23; baseline finish 2015-05-07 12:00 → 2015-05-07 |
| 19 | Đánh giá của tác giả về nội dung biên tập | 2015-05-07 13:00 A → 2015-05-07 A | 2015-05-26 17:00 A → 2015-05-26 A |  |  |  | baseline start 2015-05-07 13:00 → 2015-05-07; baseline finish 2015-05-25 12:00 → 2015-05-25 |
| 20 | Bàn giao cho bộ phận biên tập | 2015-05-26 17:00 A → 2015-05-26 A | 2015-05-26 17:00 A → 2015-05-26 A |  |  |  | baseline start 2015-05-25 12:00 → 2015-05-25; baseline finish 2015-05-25 12:00 → 2015-05-25 |
| 21 | **Biên tập** | 2015-05-27 08:00 A → 2015-05-27 A | 2015-07-03 17:00 → 2015-07-06 A (+3d) | 28d → 28.4d | 50% → 100% | 1.75d → none | baseline start 2015-05-25 13:00 → 2015-05-25; baseline finish 2015-07-03 14:00 → 2015-07-03 |
| 22 | Sắp xếp bản thảo cho bản sao | 2015-05-27 08:00 A → 2015-05-27 A | 2015-06-02 17:00 A → 2015-06-02 A |  |  |  | baseline start 2015-05-25 13:00 → 2015-05-25; baseline finish 2015-06-01 14:00 → 2015-06-01 |
| 23 | Bản sao | 2015-06-03 08:00 A → 2015-06-03 A | 2015-06-17 10:00 A → 2015-06-17 A | 10.25d → 10.5d |  |  | baseline start 2015-06-01 14:00 → 2015-06-01; baseline finish 2015-06-16 16:00 → 2015-06-16 |
| 24 | Đánh giá của tác giả về bản sao | 2015-06-17 10:00 → 2015-06-17 A | 2015-07-01 10:00 → 2015-07-01 A | 10d → 10.2d | 0% → 100% | 1.75d → none | baseline start 2015-06-16 16:00 → 2015-06-16; baseline finish 2015-06-30 16:00 → 2015-06-30 |
| 25 | Kết hợp bảo sao | 2015-06-26 15:00 → 2015-06-29 A (+3d) | 2015-07-03 17:00 → 2015-07-06 A (+3d) |  | 0% → 100% | 1.75d → none | baseline start 2015-06-26 11:00 → 2015-06-26; baseline finish 2015-07-03 14:00 → 2015-07-03 |
| 26 | Bàn giao cho bộ phận sản xuất | 2015-07-03 17:00 → 2015-07-06 A (+3d) | 2015-07-03 17:00 → 2015-07-06 A (+3d) |  | 0% → 100% | 1.75d → none | baseline start 2015-07-03 14:00 → 2015-07-03; baseline finish 2015-07-03 14:00 → 2015-07-03 |
| 27 | **Thiết kế và Sản xuất** | 2015-07-06 08:00 → 2015-07-06 A | 2015-09-23 17:00 → 2015-09-30 (+7d) | 58d → 62.6d | 0% → 43% | 1.75d → 2d | baseline start 2015-07-03 14:00 → 2015-07-03; baseline finish 2015-09-23 16:00 → 2015-09-23 |
| 28 | Thiết lập trang | 2015-07-06 08:00 → 2015-07-06 A | 2015-07-24 17:00 → 2015-07-27 A (+3d) |  | 0% → 100% | 1.75d → none | baseline start 2015-07-03 14:00 → 2015-07-03; baseline finish 2015-07-24 14:00 → 2015-07-24 |
| 29 | Thiết kế minh họa bên trong | 2015-07-06 08:00 → 2015-07-06 A | 2015-07-27 10:00 → 2015-07-29 A (+2d) | 15.25d → 17.6d | 0% → 100% | 1.75d → none | baseline start 2015-07-03 14:00 → 2015-07-03; baseline finish 2015-07-24 16:00 → 2015-07-24 |
| 30 | **Đánh giá các trang lần thứ nhất** | 2015-07-27 10:00 → 2015-07-30 A (+3d) | 2015-09-07 10:00 → 2015-09-11 (+4d) | 30d → 32d | 0% → 7% | 1.75d → 3.5d | baseline start 2015-07-24 16:00 → 2015-07-24; baseline finish 2015-09-04 16:00 → 2015-09-04 |
| 31 | Hiệu đính và lập chỉ mục | 2015-07-27 10:00 → 2015-07-30 A (+3d) | 2015-08-10 10:00 → 2015-08-14 (+4d) |  | 0% → 20% | 1.75d → 3.5d | constraint start no earlier than 2015-07-17 08:00 → start no earlier than 2015-07-17; baseline start 2015-07-24 16:00 → 2015-07-24; baseline finish 2015-08-07 16:00 → 2015-08-07 |
| 32 | Kết hợp đánh giá các trang lần thứ nhất | 2015-08-10 10:00 → 2015-08-17 (+7d) | 2015-08-24 10:00 → 2015-08-28 (+4d) |  |  | 1.75d → 3.5d | baseline start 2015-08-07 16:00 → 2015-08-07; baseline finish 2015-08-21 16:00 → 2015-08-21 |
| 33 | Gửi các trang đã được hiệu đính đến bộ phận sản xuất | 2015-08-24 10:00 → 2015-08-28 (+4d) | 2015-08-24 10:00 → 2015-08-28 (+4d) |  |  | 1.75d → 3.5d | baseline start 2015-08-21 16:00 → 2015-08-21; baseline finish 2015-08-21 16:00 → 2015-08-21 |
| 34 | Nhập các chỉnh sửa trang và lập chỉ mục | 2015-08-24 10:00 → 2015-08-31 (+7d) | 2015-08-31 10:00 → 2015-09-04 (+4d) |  |  | 1.75d → 3.5d | baseline start 2015-08-21 16:00 → 2015-08-21; baseline finish 2015-08-28 16:00 → 2015-08-28 |
| 35 | Thiết kế trang bìa | 2015-08-31 10:00 → 2015-09-07 (+7d) | 2015-09-07 10:00 → 2015-09-11 (+4d) |  |  | 1.75d → 3.5d | baseline start 2015-08-28 16:00 → 2015-08-28; baseline finish 2015-09-04 16:00 → 2015-09-04 |
| 36 | **Đánh giá các trang lần thứ hai** | 2015-09-07 10:00 → 2015-09-14 (+7d) | 2015-09-23 17:00 → 2015-09-30 (+7d) | 12.75d → 13d |  | 1.75d → 2d | baseline start 2015-09-04 16:00 → 2015-09-04; baseline finish 2015-09-23 16:00 → 2015-09-23 |
| 37 | In thử và đánh giá | 2015-09-07 10:00 → 2015-09-14 (+7d) | 2015-09-15 15:00 → 2015-09-22 (+7d) |  |  | 1.75d → 3.5d | baseline start 2015-09-04 16:00 → 2015-09-04; baseline finish 2015-09-15 11:00 → 2015-09-15 |
| 38 | Gửi các trang đã được hiệu đính đến bộ phận sản xuất | 2015-09-15 15:00 → 2015-09-22 (+7d) | 2015-09-15 15:00 → 2015-09-22 (+7d) |  |  | 1.75d → 3.5d | baseline start 2015-09-15 11:00 → 2015-09-15; baseline finish 2015-09-15 11:00 → 2015-09-15 |
| 39 | Đánh giá cuối cùng | 2015-09-17 08:00 → 2015-09-24 (+7d) | 2015-09-23 17:00 → 2015-09-30 (+7d) |  |  |  | baseline start 2015-09-16 16:00 → 2015-09-16; baseline finish 2015-09-23 16:00 → 2015-09-23 |
| 40 | **Thiết kế trang web đồng hành của sách** | 2015-09-07 10:00 → 2015-09-14 (+7d) | 2015-09-21 10:00 → 2015-09-25 (+4d) |  |  | 4.75d → 5d | baseline start 2015-09-04 16:00 → 2015-09-04; baseline finish 2015-09-18 16:00 → 2015-09-18 |
| 41 | Tạo mô hình | 2015-09-07 10:00 → 2015-09-14 (+7d) | 2015-09-17 10:00 → 2015-09-23 (+6d) |  |  | 4.75d → 5d | baseline start 2015-09-04 16:00 → 2015-09-04; baseline finish 2015-09-16 16:00 → 2015-09-16 |
| 42 | Đánh giá với tác giả | 2015-09-17 10:00 → 2015-09-24 (+7d) | 2015-09-21 10:00 → 2015-09-25 (+4d) |  |  | 4.75d → 5d | baseline start 2015-09-16 16:00 → 2015-09-16; baseline finish 2015-09-18 16:00 → 2015-09-18 |
| 43 | **Chuẩn bị màu và in** | 2015-09-28 08:00 → 2015-10-05 (+7d) | 2015-11-26 17:00 → 2015-12-03 (+7d) |  |  |  | baseline start 2015-09-23 16:00 → 2015-09-23; baseline finish 2015-11-26 16:00 → 2015-11-26 |
| 44 | Gửi đến bộ phận pha màu | 2015-09-28 08:00 → 2015-10-05 (+7d) | 2015-09-28 17:00 → 2015-10-05 (+7d) |  |  |  | baseline start 2015-09-23 16:00 → 2015-09-23; baseline finish 2015-09-28 16:00 → 2015-09-28 |
| 45 | Tạo các bản in | 2015-09-29 08:00 → 2015-10-06 (+7d) | 2015-10-12 17:00 → 2015-10-19 (+7d) |  |  |  | baseline start 2015-09-28 16:00 → 2015-09-28; baseline finish 2015-10-12 16:00 → 2015-10-12 |
| 46 | In và vận chuyển | 2015-10-16 08:00 → 2015-10-23 (+7d) | 2015-11-26 17:00 → 2015-12-03 (+7d) |  |  |  | baseline start 2015-10-15 16:00 → 2015-10-15; baseline finish 2015-11-26 16:00 → 2015-11-26 |
| 47 | **Chuẩn bị ra mắt sách** | 2015-09-29 08:00 → 2015-10-06 (+7d) | 2015-10-28 17:00 → 2015-11-04 (+7d) |  |  |  | baseline start 2015-09-28 16:00 → 2015-09-28; baseline finish 2015-10-28 16:00 → 2015-10-28 |
| 48 | Lập kế hoạch ra mắt | 2015-09-29 08:00 → 2015-10-06 (+7d) | 2015-10-05 17:00 → 2015-10-12 (+7d) |  |  |  | baseline start 2015-09-28 16:00 → 2015-09-28; baseline finish 2015-10-05 16:00 → 2015-10-05 |
| 49 | Chỉ định các thành viên trong nhóm khởi động | 2015-10-06 08:00 → 2015-10-13 (+7d) | 2015-10-06 17:00 → 2015-10-13 (+7d) |  |  |  | baseline start 2015-10-05 16:00 → 2015-10-05; baseline finish 2015-10-06 16:00 → 2015-10-06 |
| 50 | Hoàn thành bảng câu hỏi về tác giả | 2015-10-07 08:00 → 2015-10-14 (+7d) | 2015-10-13 17:00 → 2015-10-20 (+7d) |  |  |  | baseline start 2015-10-06 16:00 → 2015-10-06; baseline finish 2015-10-13 16:00 → 2015-10-13 |
| 51 | Lên lịch phỏng vấn tác giả | 2015-10-14 08:00 → 2015-10-21 (+7d) | 2015-10-14 17:00 → 2015-10-21 (+7d) |  |  |  | baseline start 2015-10-13 16:00 → 2015-10-13; baseline finish 2015-10-14 16:00 → 2015-10-14 |
| 52 | Thiết kế và đặt hàng tài liệu tiếp thị | 2015-10-15 08:00 → 2015-10-22 (+7d) | 2015-10-28 17:00 → 2015-11-04 (+7d) |  |  |  | baseline start 2015-10-14 16:00 → 2015-10-14; baseline finish 2015-10-28 16:00 → 2015-10-28 |
